Schedule from GanttProject, 2026-03-04 to 2026-07-01.

## Calendars

- Project calendar: Mon-Fri working; Sat-Sun off.

## Resources

| Resource |
| --- |
| Gerente de Projetos |
| Product Manager |
| Desenvolvedor #1 |
| Desenvolvedor #2 |
| Desenvolvedor #3 |
| Marketing |

## Schedule

| ID | Task | Duration | Start | Finish | Predecessors | Resources |
| --- | --- | --- | --- | --- | --- | --- |
| 1 | Elaborar Termo de Abertura do Projeto (TAP) | 3d | 2026-03-04 | 2026-03-06 |  | Gerente de Projetos |
| 2 | Apresentar e obter aprovação da patrocinadora | 1d | 2026-03-09 | 2026-03-09 | 1 | Gerente de Projetos [50%] |
| 3 | Designar formalmente o gerente do projeto | 1d | 2026-03-09 | 2026-03-09 | 1 | Gerente de Projetos [50%] |
| 4 | Construir a EAP (fases e subentregas) | 3d | 2026-03-10 | 2026-03-12 | 2 | Gerente de Projetos; Product Manager |
| 5 | Elaborar o Dicionário da EAP | 1d | 2026-03-13 | 2026-03-13 | 4 | Gerente de Projetos |
| 6 | Definir e documentar processo de controle de mudanças | 1d | 2026-03-16 | 2026-03-16 | 4, 5 | Gerente de Projetos |
| 7 | Identificar e classificar os stakeholders | 1d | 2026-03-13 | 2026-03-13 | 2 | Product Manager |
| 8 | Elaborar mapa e registro de stakeholders | 1d | 2026-03-16 | 2026-03-16 | 7 |  |
| 9 | Definir estratégia de engajamento e plano de comunicação | 1d | 2026-03-17 | 2026-03-17 | 8 | Gerente de Projetos |
| 10 | Identificar e descrever riscos | 1d | 2026-03-18 | 2026-03-18 | 8 | Gerente de Projetos |
| 11 | Analisar probabilidade e impacto (matriz P×I) | 1d | 2026-03-19 | 2026-03-19 | 10 | Gerente de Projetos |
| 12 | Definir planos de resposta e contingências | 3d | 2026-03-20 | 2026-03-24 | 10, 11 |  |
| 13 | Realizar reuniões semanais e registrar atas | 71d | 2026-03-25 | 2026-07-01 | 9 | Gerente de Projetos [20%] |
| 14 | Emitir status reports periódicos | 71d | 2026-03-25 | 2026-07-01 | 9 | Gerente de Projetos [20%] |
| 15 | Monitorar cronograma, custos e riscos | 70d | 2026-03-25 | 2026-06-30 | 1, 10 | Gerente de Projetos [20%] |
| 16 | Elaborar relatório final de desempenho | 2d | 2026-06-25 | 2026-06-26 | 64 | Gerente de Projetos [20%] |
| 17 | Consolidar lições aprendidas com a equipe | 1d | 2026-06-29 | 2026-06-29 | 64 | Gerente de Projetos [20%] |
| 18 | Obter aceite formal da patrocinadora | 1d | 2026-07-01 | 2026-07-01 | 81FF | Gerente de Projetos [20%] |
| 19 | Levantar e documentar requisitos com stakeholders | 5d | 2026-03-25 | 2026-03-31 | 8, 10 | Gerente de Projetos [20%]; Product Manager |
| 20 | Priorizar requisitos | 2d | 2026-04-01 | 2026-04-02 | 19 | Product Manager |
| 21 | Definir critérios de aceite por requisito | 2d | 2026-04-03 | 2026-04-06 | 19, 20 | Gerente de Projetos [20%]; Product Manager |
| 22 | Definir arquitetura dos 4 módulos do CLI | 1d | 2026-04-07 | 2026-04-07 | 20, 21 | Desenvolvedor #1; Desenvolvedor #2; Desenvolvedor #3 |
| 23 | Especificar contratos de interface entre módulos | 1d | 2026-04-08 | 2026-04-08 | 22 | Desenvolvedor #1; Desenvolvedor #2; Desenvolvedor #3 |
| 24 | Validar e decidir serviços externos | 1d | 2026-04-09 | 2026-04-09 | 23 | Product Manager; Desenvolvedor #2; Desenvolvedor #3 |
| 25 | Especificar templates por stack (6 linguagens) | 1d | 2026-04-10 | 2026-04-10 | 22, 24 | Desenvolvedor #1 |
| 26 | Especificar templates por arquitetura | 1d | 2026-04-13 | 2026-04-13 | 25 | Desenvolvedor #1 |
| 27 | Especificar templates DevOps | 1d | 2026-04-10 | 2026-04-10 | 24 | Desenvolvedor #2 |
| 28 | Desenhar fluxo interativo com menus visuais | 1d | 2026-04-10 | 2026-04-10 | 24 | Desenvolvedor #3 |
| 29 | Especificar flags não-interativas | 1d | 2026-04-13 | 2026-04-13 | 28 | Desenvolvedor #3 |
| 30 | Definir formato do painel de next steps pós geração | 1d | 2026-04-13 | 2026-04-13 | 28 | Product Manager; Desenvolvedor #2 |
| 31 | Revisar escopo técnico com toda a equipe | 1d | 2026-04-14 | 2026-04-14 | 27, 29, 30 | Gerente de Projetos [40%]; Product Manager |
| 32 | Registrar baseline do escopo e comunicar à equipe | 1d | 2026-04-15 | 2026-04-15 | 31 | Gerente de Projetos [40%] |
| 33 | Implementar interface interativa com menus | 4d | 2026-04-16 | 2026-04-21 | 28 | Desenvolvedor #1 |
| 34 | Implementar flags não-interativas | 4d | 2026-04-16 | 2026-04-21 | 29 | Desenvolvedor #2 |
| 35 | Implementar kybernus doctor - verificação do ambiente | 2d | 2026-04-22 | 2026-04-23 | 34 |  |
| 36 | Implementar geração de estrutura por stack + arquitetura | 3d | 2026-04-24 | 2026-04-28 | 35 | Desenvolvedor #2 |
| 37 | Implementar templates Node.js+Express e NestJS | 1d | 2026-04-29 | 2026-04-29 | 25 |  |
| 38 | Implementar templates FastAPI e Spring Boot | 1d | 2026-04-29 | 2026-04-29 | 25 | Desenvolvedor #2 |
| 39 | Implementar templates Next.js e n8n | 1d | 2026-04-29 | 2026-04-29 | 25 | Desenvolvedor #3 |
| 40 | Gerar arquivos base: .env, ESLint, Prettier | 1d | 2026-04-30 | 2026-04-30 | 37 | Desenvolvedor #1 |
| 41 | Implementar geração de Docker + GitHub Actions + Terraform | 2d | 2026-05-01 | 2026-05-04 | 26 | Desenvolvedor #2 |
| 42 | Implementar kybernus deploy | 1d | 2026-05-05 | 2026-05-05 | 26, 41 | Desenvolvedor #3 |
| 43 | Implementar suporte a template customizado via GitHub | 1d | 2026-05-06 | 2026-05-06 | 27, 42 | Desenvolvedor #3 |
| 44 | Implementar kybernus add swagger, redis | 2d | 2026-05-07 | 2026-05-08 | 40 | Desenvolvedor #3 |
| 45 | Implementar kybernus add websocket, husky | 1d | 2026-05-11 | 2026-05-11 | 44 | Desenvolvedor #2 |
| 46 | Implementar kybernus auth - boilerplate JWT | 1d | 2026-05-12 | 2026-05-12 | 45 | Desenvolvedor #1 |
| 47 | Garantir compatibilidade com projetos externos ao Kybernus | 1d | 2026-05-13 | 2026-05-13 | 46 | Desenvolvedor #2 |
| 48 | Integrar API Google Gemini ao módulo | 3d | 2026-05-01 | 2026-05-05 | 32 | Desenvolvedor #1 |
| 49 | Implementar geração automática de README e guias | 3d | 2026-05-06 | 2026-05-08 | 48 | Desenvolvedor #2 |
| 50 | Implementar tratamento de falha quando API indisponível | 1d | 2026-05-11 | 2026-05-11 | 49 | Desenvolvedor #1 |
| 51 | Implementar coleta anônima via PostHog | 1d | 2026-05-12 | 2026-05-12 | 50 | Desenvolvedor #3 |
| 52 | Implementar notificação no 1º uso + opt-out | 1d | 2026-05-13 | 2026-05-13 | 51 | Desenvolvedor #3 |
| 53 | Elaborar e implementar política de privacidade (LGPD) | 3d | 2026-05-14 | 2026-05-18 | 52 | Gerente de Projetos [40%]; Desenvolvedor #3 |
| 54 | Publicar ferramenta no npm | 3d | 2026-05-19 | 2026-05-21 | 40, 47, 50, 53 | Desenvolvedor #1 |
| 55 | Validar suporte Win/macOS/Linux | 3d | 2026-05-22 | 2026-05-26 | 54 | Desenvolvedor #1 |
| 56 | Configurar CI/CD do próprio projeto Kybernus | 3d | 2026-05-22 | 2026-05-26 | 47, 54 | Desenvolvedor #2 |
| 57 | Escrever testes unitários por módulo | 1d | 2026-05-27 | 2026-05-27 | 54, 55, 56 | Desenvolvedor #1; Desenvolvedor #2; Desenvolvedor #3 |
| 58 | Escrever testes de integração por módulo | 1d | 2026-05-28 | 2026-05-28 | 57 | Desenvolvedor #1; Desenvolvedor #3 |
| 59 | Validar sintaxe de arquivos gerados para todas as combinações | 1d | 2026-05-28 | 2026-05-28 | 57 | Desenvolvedor #2 |
| 60 | Recrutar 5 desenvolvedores externos para testes | 1d | 2026-05-29 | 2026-05-29 | 59 | Gerente de Projetos [40%] |
| 61 | Conduzir sessões de instalação e geração sem auxílio | 1d | 2026-06-01 | 2026-06-01 | 60 | Gerente de Projetos [40%]; Desenvolvedor #1; Desenvolvedor #2; Desenvolvedor #3 |
| 62 | Registrar resultados e validar meta de 80% de sucesso | 1d | 2026-06-02 | 2026-06-02 | 61 | Gerente de Projetos [40%] |
| 63 | Verificar checklist formal de critérios de aceite do TAP | 3d | 2026-06-03 | 2026-06-05 | 62 | Gerente de Projetos [40%] |
| 64 | Elaborar relatório de validação interna | 3d | 2026-06-08 | 2026-06-10 | 63 | Gerente de Projetos [40%] |
| 65 | Elaborar README completo do repositório modelo GitHub | 3d | 2026-06-02 | 2026-06-04 | 59 | Desenvolvedor #3 |
| 66 | Elaborar guia de contribuicçaão para comunicada open-source | 1d | 2026-06-05 | 2026-06-05 | 65 | Desenvolvedor #2 |
| 67 | Documentar módulos internos | 1d | 2026-06-08 | 2026-06-08 | 66 | Product Manager; Desenvolvedor #1 |
| 68 | Escrever guia de instalação e uso | 1d | 2026-06-09 | 2026-06-09 | 61 | Product Manager; Desenvolvedor #3 |
| 69 | Elaborar FAQ e troubleshooting | 1d | 2026-06-10 | 2026-06-10 | 68 | Desenvolvedor #1; Desenvolvedor #2 |
| 70 | Desenvolver conteúdo e layout da landing page | 1d | 2026-06-11 | 2026-06-11 | 67, 69 | Desenvolvedor #1; Marketing |

| ID | Task | Duration | Start | Finish | Predecessors | Resources |
| --- | --- | --- | --- | --- | --- | --- |
| 71 | Publicar landing page e validar links | 1d | 2026-06-12 | 2026-06-12 | 70 | Desenvolvedor #1 |
| 72 | Configurar repositório público com README e CONTRIBUTING | 1d | 2026-06-09 | 2026-06-09 | 66, 67 | Desenvolvedor #2 |
| 73 | Criar templates de issues e pull requests | 1d | 2026-06-10 | 2026-06-10 | 72 | Desenvolvedor #3 |
| 74 | Definir plano de canais | 3d | 2026-06-12 | 2026-06-16 | 64 | Marketing |
| 75 | Produzir conteúdo para divulgação | 3d | 2026-06-17 | 2026-06-19 | 74 |  |
| 76 | Redigir comunicado oficial de lançamento | 1d | 2026-06-22 | 2026-06-22 | 75 | Gerente de Projetos [40%]; Marketing |
| 77 | Executar deploy final e publicar versão npm | 1d | 2026-06-23 | 2026-06-23 | 76 | Desenvolvedor #1 |
| 78 | Executar campanha de divulgação nos canais definidos | 3d | 2026-06-24 | 2026-06-26 | 77 | Marketing |
| 79 | Ativar monitoramento via PostHog pós-lançamento | 1d | 2026-06-24 | 2026-06-24 | 77 | Desenvolvedor #2 |
| 80 | Coletar feedback e métricas de adoção iniciais | 3d | 2026-06-25 | 2026-06-29 | 79 | Gerente de Projetos [20%] |
| 81 | Apresentar relatório final à patrocinadora | 1d | 2026-07-01 | 2026-07-01 | 80 | Gerente de Projetos [40%] |
| 82 | Obter aceite formal e encerrar projeto | 1d | 2026-07-01 | 2026-07-01 |  | Gerente de Projetos [20%] |
